# HKMCApplicationSWPlan

Schedule from MS Project, 2020-02-13 to 2020-07-15, A marks actual dates.

## Calendars

- Standard: Mon-Fri 08:00-12:00, 13:00-17:00; Sat-Sun off. Exceptions (off unless hours are given): 2020-04-01 (KHT Company Celebration Day), 2020-04-15 (KHT Public Holiday), 2020-04-30 (KHT Public Holiday 2).

## Resources

| Resource |
| --- |
| Soo-Jin Ahn |
| Hoon Bae |
| Choong-Yup Shin |
| Philippe Lavole |
| Hyun-Jin Choi |
| Srikanth Mukku |
| Young-Jung Huh |

## Schedule

| ID | WBS | Task | Type | Duration | Start | Finish | Predecessors | Complete | Remaining | Total slack | Free slack | Resources | Work | Actual work | CW |
| --- | --- | --- | --- | --- | --- | --- | --- | --- | --- | --- | --- | --- | --- | --- | --- |
| 1 | 1 | **HKMC 2020 proto** |  | 106.3d | 2020-02-13 A | 2020-07-15 |  | 25% | 79.92d | 0d |  |  | 4055.2h | 1237.75h |  |
| 2 | 1.1 | HKMC R0 SDB | milestone, manual | 0d | 2020-02-13 | 2020-02-13 |  |  |  |  |  |  |  |  | W07/4 - W07/4 |
| 3 | 1.2 | **SW Release R0** |  | 51.3d | 2020-02-13 A | 2020-04-28 |  | 50% | 25.84d | 55d |  |  | 2009.6h | 1156.95h |  |
| 4 | 1.2.1 | **Systems** |  | 16.8d | 2020-02-13 A | 2020-03-06 |  | 80% | 3.36d | 1.2d |  |  | 156.8h | 107.52h |  |
| 5 | 1.2.1.1 | Creation of SDB |  | 16.8d | 2020-02-13 A | 2020-03-06 | 2 | 80% | 3.36d | 1.2d | 0d | Soo-Jin Ahn; Philippe Lavole; Hyun-Jin Choi | 156.8h | 107.52h | W07/4 - W10/5 |
| 6 | 1.2.1.2 | SDB Release | milestone | 0d | 2020-03-06 | 2020-03-06 | 5 |  |  | 1.2d | 0d | Soo-Jin Ahn |  |  | W10/5 - W10/5 |
| 7 | 1.2.2 | **Application SW** |  | 43.3d | 2020-02-25 A | 2020-04-28 |  | 44% | 24.37d | 55d |  | Srikanth Mukku | 1844.8h | 1049.43h |  |
| 8 | 1.2.2.1 | **SW Architecture** |  | 19d | 2020-03-06 A | 2020-04-03 |  | 57% | 8.16d | 70.5d |  | Soo-Jin Ahn | 440h | 246.73h |  |
| 9 | 1.2.2.1.1 | SW Adaptors Strategy. |  | 2d | 2020-03-06 A | 2020-03-10 | 6 | 80% | 0.4d | 12d | 10d | Soo-Jin Ahn | 16h | 12.8h | W10/5 - W11/2 |
| 10 | 1.2.2.1.2 | SW Architecture in EA Development |  | 4d | 2020-03-24 A | 2020-03-30 | 9, 26, 47, 67, 24, 44, 64, 19, 84, 87 | 50% | 2d | 2.1d | 0d | Soo-Jin Ahn | 32h | 16h | W13/2 - W14/1 |
| 11 | 1.2.2.1.3 | SW EA Architecture Review |  | 3d | 2020-03-30 A | 2020-04-03 | 10 | 70% | 0.9d | 70.5d | 0d | Soo-Jin Ahn; Choong-Yup Shin; Hoon Bae; Young-Jung Huh | 96h | 67.2h | W14/1 - W14/5 |
| 12 | 1.2.2.1.4 | SW EA Architecture Release | milestone | 0d | 2020-04-03 | 2020-04-03 | 11 |  |  | 70.5d |  | Soo-Jin Ahn |  |  | W14/5 - W14/5 |
| 13 | 1.2.2.1.5 | **SW Architecture ARXML 's Development** |  | 7d | 2020-03-12 A | 2020-03-23 |  | 57% | 3d | 2d |  | Soo-Jin Ahn | 112h | 64h |  |
| 14 | 1.2.2.1.5.1 | Adaptors Design in Davinci Developer. |  | 4d | 2020-03-12 A | 2020-03-18 | 24, 44, 64, 6, 84 | 80% | 0.8d | 0.8d | 0d | Soo-Jin Ahn | 32h | 25.6h | W11/4 - W12/3 |
| 15 | 1.2.2.1.5.2 | Adaptors ARXML Generation for simulink import. |  | 1d | 2020-03-18 A | 2020-03-19 | 14 | 80% | 0.2d | 2d | 0d | Soo-Jin Ahn | 8h | 6.4h | W12/3 - W12/4 |
| 16 | 1.2.2.1.5.3 | Scheduler for ASP SW Integration |  | 1d | 2020-03-19 | 2020-03-20 | 15 |  |  | 2d | 0d | Soo-Jin Ahn | 8h |  | W12/4 - W12/5 |
| 17 | 1.2.2.1.5.4 | Scheduler for SW Adaptors. |  | 1d | 2020-03-20 | 2020-03-23 | 16 |  |  | 2d | 0d | Soo-Jin Ahn | 8h |  | W12/5 - W13/1 |
| 18 | 1.2.2.1.6 | ARXML's Review for Basic SW & Adaptors Development |  | 1d | 2020-03-23 | 2020-03-24 | 17 |  |  | 2d | 0d | Soo-Jin Ahn; Choong-Yup Shin; Hoon Bae; Young-Jung Huh | 32h |  | W13/1 - W13/2 |
| 19 | 1.2.2.1.7 | ARXML's Release | milestone | 0d | 2020-03-24 A | 2020-03-24 | 18 | 80% | 0d | 2d | 0d | Soo-Jin Ahn |  |  | W13/2 - W13/2 |
| 20 | 1.2.2.2 | **Adaptor 1 : FCA-Car/Ped Adaptor Development** |  | 17.5d | 2020-03-06 A | 2020-04-02 |  | 63% | 6.45d | 0.4d |  | Hoon Bae | 258.4h | 173.6h |  |
| 21 | 1.2.2.2.1 | **Feature_SignalInterfaceMatrix** |  | 2d | 2020-03-06 A | 2020-03-10 |  | 80% | 0.4d | 1.2d |  | Hoon Bae | 40h | 32h |  |
| 22 | 1.2.2.2.1.1 | Creation of SignalInterfaceMatrix |  | 12h | 2020-03-06 A | 2020-03-10 | 6 | 80% | 2.4h | 0.4d | 0d | Hoon Bae | 12h | 9.6h | W10/5 - W11/2 |
| 23 | 1.2.2.2.1.2 | Review of SignalInterface Matrix |  | 4h | 2020-03-10 A | 2020-03-10 | 22 | 80% | 0.8h | 1.2d | 0d | Hoon Bae; Soo-Jin Ahn; Young-Jung Huh | 12h | 9.6h | W11/2 - W11/2 |
| 24 | 1.2.2.2.1.3 | Release of FCA Car7Ped Adaptor SignalInterface Matrix | milestone | 0d | 2020-03-10 A | 2020-03-10 | 23 | 80% | 0d | 1.2d | 0d | Hoon Bae |  |  | W11/2 - W11/2 |
| 25 | 1.2.2.2.2 | Adaptor Detailed Design( if it is a small gap FD has to do that, if it is a big gap FO has to do that). | milestone | 0d | 2020-03-12 | 2020-03-12 | 21, 64 |  |  | 3.2d | 0d | Hoon Bae |  |  | W11/4 - W11/4 |
| 26 | 1.2.2.2.3 | Adaptor Detailed Design Review | milestone | 0d | 2020-03-12 | 2020-03-12 | 25 |  |  | 3.2d | 0d | Hoon Bae; Soo-Jin Ahn; Young-Jung Huh |  |  | W11/4 - W11/4 |
| 27 | 1.2.2.2.4 | Release of FCA Car/Ped Adaptor Detailed Design | milestone | 0d | 2020-03-12 | 2020-03-12 | 26 |  |  | 3.2d | 0d | Hoon Bae |  |  | W11/4 - W11/4 |

Notes:
- 2: Starting MileStone
- 3: FLC Variant : / F1. FCA-Car/Ped/ F2. LKA-L / Assumption from Me : / Needed Adaptors on FLC SW: / A1 : FCA-CAr/Ped / A2 : LKA -L / A3 : Vehicle Input / A4 : Vehicle Output
- 5: This is a FO Task, but at present supported by SW Architect / This need to be done for all features
- 9: This is not yet reflected in the work flow diagram
- 10: SW Architecture for Adaptors
- 21: This is the signal interface matrix at / SWC level for supporting Archtecture
- 25: not applicable for R0
- 26: not applicable for R0
- 27: not applicable for R0

| ID | WBS | Task | Type | Duration | Start | Finish | Predecessors | Complete | Remaining | Total slack | Free slack | Resources | Work | Actual work | CW |
| --- | --- | --- | --- | --- | --- | --- | --- | --- | --- | --- | --- | --- | --- | --- | --- |
| 28 | 1.2.2.2.5 | **Adaptor Simulink Development** |  | 11.5d | 2020-03-12 A | 2020-03-30 |  | 80% | 2.3d | 0.4d |  | Hoon Bae | 144h | 115.2h |  |
| 29 | 1.2.2.2.5.1 | Simulink Design Development |  | 4d | 2020-03-12 A | 2020-03-18 | 27 | 80% | 0.8d | 4.8d | 0d | Hoon Bae | 32h | 25.6h | W11/4 - W12/3 |
| 30 | 1.2.2.2.5.2 | Simulink Import of ARXML & linking to Development Models |  | 4h | 2020-03-26 A | 2020-03-27 | 19, 69 | 80% | 0.8h | 0.4d | 0d | Hoon Bae | 4h | 3.2h | W13/4 - W13/5 |
| 31 | 1.2.2.2.5.3 | Simulink Design Release & Review |  | 4h | 2020-03-27 A | 2020-03-27 | 30 | 80% | 0.8h | 0.4d | 0d | Hoon Bae; Soo-Jin Ahn; Young-Jung Huh | 12h | 9.6h | W13/5 - W13/5 |
| 32 | 1.2.2.2.5.4 | Adaptor Code Generation from Simulink. |  | 4h | 2020-03-27 A | 2020-03-30 | 31 | 80% | 0.8h | 0.4d | 0d | Hoon Bae | 4h | 3.2h | W13/5 - W14/1 |
| 33 | 1.2.2.2.5.5 | Release of FCA-Car/Ped Adaptor Simulink Design | milestone | 0d | 2020-03-30 | 2020-03-30 | 32 |  |  | 0.4d | 0d | Hoon Bae |  |  | W14/1 - W14/1 |
| 34 | 1.2.2.2.6 | **SW Unit Test Specification & Test Cases Development** |  | 0d | 2020-03-30 | 2020-03-30 |  |  |  | 0.4d |  | Hoon Bae |  |  |  |
| 35 | 1.2.2.2.6.1 | Adaptor Unit Test Specification. | milestone | 0d | 2020-03-30 | 2020-03-30 | 33 |  |  | 0.4d | 0d | Hoon Bae |  |  | W14/1 - W14/1 |
| 36 | 1.2.2.2.6.2 | Adaptor Unit Test Cases Implementation. | milestone | 0d | 2020-03-30 | 2020-03-30 | 35 |  |  | 0.4d | 0d | Hoon Bae |  |  | W14/1 - W14/1 |
| 37 | 1.2.2.2.7 | Adaptor Unit Test Execution and its report generation. | milestone | 0d | 2020-03-30 | 2020-03-30 | 36 |  |  | 0.4d | 0d | Hoon Bae |  |  | W14/1 - W14/1 |
| 38 | 1.2.2.2.8 | SW Source Code & Unit Test Report Review |  | 2d | 2020-03-30 | 2020-04-02 | 37 |  |  | 0.4d | 0d | Hoon Bae; Soo-Jin Ahn; Young-Jung Huh | 48h |  | W14/1 - W14/4 |
| 39 | 1.2.2.2.9 | Release of FCA-Car/Ped SW Source Code & SW Unit Test Report | milestone | 0d | 2020-04-02 | 2020-04-02 | 38 |  |  | 0.4d | 0d | Hoon Bae |  |  | W14/4 - W14/4 |
| 40 | 1.2.2.3 | **Adaptor 2 : LKA-L Adaptor Development** |  | 16.5d | 2020-03-06 A | 2020-03-31 |  | 52% | 7.96d | 0.4d |  | Choong-Yup Shin | 226.4h | 133.6h |  |
| 41 | 1.2.2.3.1 | **Signal Matrix preparation for Adaptor for architecture support.** |  | 2d | 2020-03-06 | 2020-03-10 |  |  |  | 1.2d |  | Choong-Yup Shin | 40h |  |  |
| 42 | 1.2.2.3.1.1 | Creation of SignalInterfaceMatrix |  | 12h | 2020-03-06 | 2020-03-10 | 6 |  |  | 1.2d | 0d | Choong-Yup Shin | 12h |  | W10/5 - W11/2 |
| 43 | 1.2.2.3.1.2 | Review & Release of SignalInterface Matrix |  | 4h | 2020-03-10 | 2020-03-10 | 42 |  |  | 1.2d | 0d | Soo-Jin Ahn; Choong-Yup Shin; Young-Jung Huh | 12h |  | W11/2 - W11/2 |
| 44 | 1.2.2.3.1.3 | Release of LKA-L Adaptor SignalInterface Matrix | milestone | 0d | 2020-03-10 | 2020-03-10 | 43 |  |  | 1.2d | 0d | Choong-Yup Shin |  |  | W11/2 - W11/2 |
| 45 | 1.2.2.3.2 | Adaptor Detailed Design( if it is a small gap FD has to do that, if it is a big gap FO has to do that). | milestone | 0d | 2020-03-12 | 2020-03-12 | 44, 84 |  |  | 3.2d | 0d | Choong-Yup Shin |  |  | W11/4 - W11/4 |
| 46 | 1.2.2.3.3 | Adaptor Detailed Design Review | milestone | 0d | 2020-03-12 | 2020-03-12 | 45 |  |  | 3.2d | 0d | Soo-Jin Ahn; Choong-Yup Shin; Young-Jung Huh |  |  | W11/4 - W11/4 |
| 47 | 1.2.2.3.4 | Release of LKA-L Adaptor Detailed Design | milestone | 0d | 2020-03-12 | 2020-03-12 | 46 |  |  | 3.2d | 0d | Choong-Yup Shin |  |  | W11/4 - W11/4 |
| 48 | 1.2.2.3.5 | **Adaptor Simulink Development** |  | 11.5d | 2020-03-12 A | 2020-03-30 |  | 80% | 2.3d | 0.4d |  | Choong-Yup Shin | 144h | 115.2h |  |
| 49 | 1.2.2.3.5.1 | Simulink Design Development |  | 4d | 2020-03-12 A | 2020-03-18 | 47 | 80% | 0.8d | 4.8d | 0d | Choong-Yup Shin | 32h | 25.6h | W11/4 - W12/3 |
| 50 | 1.2.2.3.5.2 | Simulink Import of ARXML & linking to Development Models |  | 4h | 2020-03-26 A | 2020-03-27 | 19, 89 | 80% | 0.8h | 0.4d | 0d | Choong-Yup Shin | 4h | 3.2h | W13/4 - W13/5 |
| 51 | 1.2.2.3.5.3 | Simulink Design Release & Review |  | 4h | 2020-03-27 A | 2020-03-27 | 50 | 80% | 0.8h | 0.4d | 0d | Choong-Yup Shin; Soo-Jin Ahn; Young-Jung Huh | 12h | 9.6h | W13/5 - W13/5 |
| 52 | 1.2.2.3.5.4 | Adaptor Code Generation from Simulink. |  | 4h | 2020-03-27 A | 2020-03-30 | 51 | 80% | 0.8h | 0.4d | 0d | Choong-Yup Shin | 4h | 3.2h | W13/5 - W14/1 |
| 53 | 1.2.2.3.5.5 | Release of LKA-L Adaptor Simulink Design | milestone | 0h | 2020-03-30 | 2020-03-30 | 52 |  |  | 0.4d | 0d | Choong-Yup Shin |  |  | W14/1 - W14/1 |

Notes:
- 34: not applicable for R0
- 35: not applicable for R0
- 36: not applicable for R0
- 37: not applicable for R0
- 45: not applicable for R0
- 46: not applicable for R0
- 47: not applicable for R0

| ID | WBS | Task | Type | Duration | Start | Finish | Predecessors | Complete | Remaining | Total slack | Free slack | Resources | Work | Actual work | CW |
| --- | --- | --- | --- | --- | --- | --- | --- | --- | --- | --- | --- | --- | --- | --- | --- |
| 54 | 1.2.2.3.6 | **SW Unit Test Specification & Test Cases Development** |  | 0d | 2020-03-30 | 2020-03-30 |  |  |  | 0.4d |  | Choong-Yup Shin |  |  |  |
| 55 | 1.2.2.3.6.1 | Adaptor Unit Test Specification. | milestone | 0d | 2020-03-30 | 2020-03-30 | 53 |  |  | 0.4d | 0d | Choong-Yup Shin |  |  | W14/1 - W14/1 |
| 56 | 1.2.2.3.6.2 | Adaptor Unit Test Cases Implementation. | milestone | 0d | 2020-03-30 | 2020-03-30 | 55 |  |  | 0.4d | 0d | Choong-Yup Shin |  |  | W14/1 - W14/1 |
| 57 | 1.2.2.3.7 | Adaptor Unit Test Execution and its report generation. | milestone | 0d | 2020-03-30 | 2020-03-30 | 56 |  |  | 0.4d | 0d | Choong-Yup Shin |  |  | W14/1 - W14/1 |
| 58 | 1.2.2.3.8 | SW Source Code & Unit Test Report Review |  | 1d | 2020-03-30 | 2020-03-31 | 57 |  |  | 0.4d | 0d | Choong-Yup Shin; Soo-Jin Ahn; Young-Jung Huh | 24h |  | W14/1 - W14/2 |
| 59 | 1.2.2.3.9 | Release of LKA_L SW Source Code & Unit Test Report | milestone | 0d | 2020-03-31 | 2020-03-31 | 58 |  |  | 0.4d | 0d | Choong-Yup Shin |  |  | W14/2 - W14/2 |
| 60 | 1.2.2.4 | **Vehicle Input Adaptor** |  | 22.5d | 2020-03-10 A | 2020-04-13 |  | 60% | 9d | 55d |  | Hoon Bae | 424h | 240.62h |  |
| 61 | 1.2.2.4.1 | **Signal Matrix preparation for Adaptor for architecture support.** |  | 2d | 2020-03-10 A | 2020-03-12 |  | 80% | 0.4d | 3.2d |  |  | 24h | 19.2h |  |
| 62 | 1.2.2.4.1.1 | Creation of SignalInterfaceMatrix |  | 12h | 2020-03-10 A | 2020-03-12 | 6, 24 | 80% | 2.4h | 0.4d | 0d | Hoon Bae | 12h | 9.6h | W11/2 - W11/4 |
| 63 | 1.2.2.4.1.2 | Review & Release of SignalInterface Matrix |  | 4h | 2020-03-12 A | 2020-03-12 | 62 | 80% | 0.8h | 3.2d | 0d | Soo-Jin Ahn; Hoon Bae; Young-Jung Huh | 12h | 9.6h | W11/4 - W11/4 |
| 64 | 1.2.2.4.1.3 | Release of Veh_Inp Adaptor SignalInterface Matrix | milestone | 0d | 2020-03-12 A | 2020-03-12 | 63 | 80% | 0d | 3.2d | 0d | Hoon Bae |  |  | W11/4 - W11/4 |
| 65 | 1.2.2.4.2 | Adaptor Detailed Design( if it is a small gap FD has to do that, if it is a big gap FO has to do that). | milestone | 0d | 2020-03-18 | 2020-03-18 | 61, 29 |  |  | 4.8d | 0d | Hoon Bae |  |  | W12/3 - W12/3 |
| 66 | 1.2.2.4.3 | Adaptor Detailed Design Review | milestone | 0d | 2020-03-18 | 2020-03-18 | 65 |  |  | 4.8d | 0d | Soo-Jin Ahn; Hoon Bae; Young-Jung Huh |  |  | W12/3 - W12/3 |
| 67 | 1.2.2.4.4 | Release of Veh_Inp Adaptor Detailed Design | milestone | 0d | 2020-03-18 | 2020-03-18 | 66 |  |  | 4.8d | 0d | Hoon Bae |  |  | W12/3 - W12/3 |
| 68 | 1.2.2.4.5 | **Adaptor Simulink Development** |  | 12.5d | 2020-03-18 A | 2020-04-07 |  | 62% | 4.72d | 55d |  | Hoon Bae | 180h | 113.42h |  |
| 69 | 1.2.2.4.5.1 | Simulink Design Development |  | 6d | 2020-03-18 A | 2020-03-26 | 67 | 80% | 1.2d | 0.4d | 0d | Hoon Bae | 48h | 38.4h | W12/3 - W13/4 |
| 70 | 1.2.2.4.5.2 | Simulink Import of ARXML & linking to Development Models |  | 4h | 2020-04-02 A | 2020-04-02 | 19, 39 | 80% | 0.8h | 0.4d | 0d | Hoon Bae | 4h | 3.2h | W14/4 - W14/4 |
| 71 | 1.2.2.4.5.3 | Simulink Design Release & Review |  | 4h | 2020-04-02 A | 2020-04-03 | 70 | 80% | 0.8h | 55d | 0d | Hoon Bae; Soo-Jin Ahn; Young-Jung Huh | 12h | 9.6h | W14/4 - W14/5 |
| 72 | 1.2.2.4.5.4 | Adaptor Code Generation from Simulink. |  | 2d | 2020-04-03 | 2020-04-07 | 71 |  |  | 55d | 0d | Hoon Bae | 16h |  | W14/5 - W15/2 |
| 73 | 1.2.2.4.5.5 | Release of Veh_Inp Adaptor Simulink Design | milestone | 0d | 2020-04-07 | 2020-04-07 | 72 |  |  | 55d | 0d | Hoon Bae |  |  | W15/2 - W15/2 |
| 74 | 1.2.2.4.6 | **SW Unit Test Specification & Test Cases Development** |  | 2d | 2020-04-07 | 2020-04-09 |  |  |  | 55d |  | Hoon Bae | 16h |  |  |
| 75 | 1.2.2.4.6.1 | Adaptor Unit Test Specification. | milestone | 0d | 2020-04-07 | 2020-04-08 | 73 |  |  | 55d | 0d | Hoon Bae |  |  | W15/2 - W15/3 |
| 76 | 1.2.2.4.6.2 | Adaptor Unit Test Cases Implementation. | milestone | 0d | 2020-04-08 | 2020-04-09 | 75 |  |  | 55d | 0d | Hoon Bae |  |  | W15/3 - W15/4 |
| 77 | 1.2.2.4.7 | Adaptor Unit Test Execution and its report generation. | milestone | 0d | 2020-04-09 | 2020-04-10 | 76 |  |  | 55d | 0d | Hoon Bae |  |  | W15/4 - W15/5 |
| 78 | 1.2.2.4.8 | SW Source Code & Unit Test Report Review |  | 1d | 2020-04-10 | 2020-04-13 | 77 |  |  | 55d | 0d | Soo-Jin Ahn; Hoon Bae; Young-Jung Huh | 24h |  | W15/5 - W16/1 |
| 79 | 1.2.2.4.9 | Release of Vhe_In Adaptor SW Source Code & Unit Test Report | milestone | 0d | 2020-04-13 | 2020-04-13 | 78 |  |  | 55d | 0d | Hoon Bae |  |  | W16/1 - W16/1 |

Notes:
- 54: not applicable for R0
- 55: not applicable for R0
- 56: not applicable for R0
- 57: not applicable for R0
- 58: not applicable for R0
- 59: not applicable for R0
- 65: not applicable for R0
- 66: not applicable for R0
- 67: not applicable for R0
- 74: not applicable for R0
- 75: not applicable for R0
- 76: not applicable for R0
- 77: not applicable for R0
- 78: not applicable for R0
- 79: not applicable for R0

| ID | WBS | Task | Type | Duration | Start | Finish | Predecessors | Complete | Remaining | Total slack | Free slack | Resources | Work | Actual work | CW |
| --- | --- | --- | --- | --- | --- | --- | --- | --- | --- | --- | --- | --- | --- | --- | --- |
| 80 | 1.2.2.5 | **Vehicle Output Adaptor** |  | 18.5d | 2020-03-10 A | 2020-04-07 |  | 57% | 8.02d | 69d |  | Choong-Yup Shin | 256h | 149.96h |  |
| 81 | 1.2.2.5.1 | **Signal Matrix preparation for Adaptor for architecture support.** |  | 2d | 2020-03-10 A | 2020-03-12 |  | 80% | 0.4d | 3.2d |  |  | 24h | 19.2h |  |
| 82 | 1.2.2.5.1.1 | Creation of SignalInterfaceMatrix |  | 12h | 2020-03-10 A | 2020-03-12 | 6, 44 | 80% | 2.4h | 0.4d | 0d | Choong-Yup Shin | 12h | 9.6h | W11/2 - W11/4 |
| 83 | 1.2.2.5.1.2 | Review & Release of SignalInterface Matrix |  | 4h | 2020-03-12 A | 2020-03-12 | 82 | 80% | 0.8h | 3.2d | 0d | Soo-Jin Ahn; Choong-Yup Shin; Young-Jung Huh | 12h | 9.6h | W11/4 - W11/4 |
| 84 | 1.2.2.5.1.3 | Release of Veh_Out Adaptor SignalInterface Matrix | milestone | 0d | 2020-03-12 A | 2020-03-12 | 83 | 80% | 0d | 3.2d | 0d | Choong-Yup Shin |  |  | W11/4 - W11/4 |
| 85 | 1.2.2.5.2 | Adaptor Detailed Design( if it is a small gap FD has to do that, if it is a big gap FO has to do that). | milestone | 0d | 2020-03-18 | 2020-03-18 | 81, 49 |  |  | 4.8d | 0d | Choong-Yup Shin |  |  | W12/3 - W12/3 |
| 86 | 1.2.2.5.3 | Adaptor Detailed Design Review | milestone | 0d | 2020-03-18 | 2020-03-18 | 85 |  |  | 81.5d |  | Soo-Jin Ahn; Choong-Yup Shin; Young-Jung Huh |  |  | W12/3 - W12/3 |
| 87 | 1.2.2.5.4 | Release of Veh_Out Adaptor Detailed Design | milestone | 0d | 2020-03-18 | 2020-03-18 | 85 |  |  | 4.8d | 0d | Choong-Yup Shin |  |  | W12/3 - W12/3 |
| 88 | 1.2.2.5.5 | **Adaptor Simulink Development** |  | 11.5d | 2020-03-18 A | 2020-04-06 |  | 58% | 4.86d | 59d |  | Choong-Yup Shin | 172h | 94.75h |  |
| 89 | 1.2.2.5.5.1 | Simulink Design Development |  | 6d | 2020-03-18 A | 2020-03-26 | 87 | 80% | 1.2d | 0.4d | 0d | Choong-Yup Shin | 48h | 38.4h | W12/3 - W13/4 |
| 90 | 1.2.2.5.5.2 | Simulink Import of ARXML & linking to Development Models |  | 4h | 2020-03-31 A | 2020-03-31 | 19, 59 | 80% | 0.8h | 59d | 0d | Choong-Yup Shin | 4h | 3.2h | W14/2 - W14/2 |
| 91 | 1.2.2.5.5.3 | Simulink Design Release & Review |  | 4h | 2020-03-31 | 2020-04-02 | 90 |  |  | 59d | 0d | Choong-Yup Shin; Soo-Jin Ahn; Young-Jung Huh | 12h |  | W14/2 - W14/4 |
| 92 | 1.2.2.5.5.4 | Adaptor Code Generation from Simulink. |  | 2d | 2020-04-02 | 2020-04-06 | 91 |  |  | 59d | 0d | Choong-Yup Shin | 16h |  | W14/4 - W15/1 |
| 93 | 1.2.2.5.5.5 | Release of Veh_Out Adaptor Simulink Design | milestone | 0d | 2020-04-06 | 2020-04-06 | 92 |  |  | 59d | 0d | Choong-Yup Shin |  |  | W15/1 - W15/1 |
| 94 | 1.2.2.5.6 | **SW Unit Test Specification & Test Cases Development** |  | 0d | 2020-04-06 | 2020-04-06 |  |  |  | 59d |  | Choong-Yup Shin |  |  |  |
| 95 | 1.2.2.5.6.1 | Adaptor Unit Test Specification. | milestone | 0d | 2020-04-06 | 2020-04-06 | 93 |  |  | 59d | 0d | Choong-Yup Shin |  |  | W15/1 - W15/1 |
| 96 | 1.2.2.5.6.2 | Adaptor Unit Test Cases Implementation. | milestone | 0d | 2020-04-06 | 2020-04-06 | 95 |  |  | 59d | 0d | Choong-Yup Shin |  |  | W15/1 - W15/1 |
| 97 | 1.2.2.5.7 | Adaptor Unit Test Execution and its report generation. | milestone | 0d | 2020-04-06 | 2020-04-06 | 96 |  |  | 59d | 0d | Choong-Yup Shin |  |  | W15/1 - W15/1 |
| 98 | 1.2.2.5.8 | SW Source Code & Unit Test Report Review |  | 1d | 2020-04-06 | 2020-04-07 | 97 |  |  | 59d | 0d | Choong-Yup Shin; Soo-Jin Ahn; Young-Jung Huh | 24h |  | W15/1 - W15/2 |
| 99 | 1.2.2.5.9 | Release of Veh_Out Adaptor SW Source Code & Unit Test Report | milestone | 0d | 2020-04-07 | 2020-04-07 | 98 |  |  | 59d | 4d | Choong-Yup Shin |  |  | W15/2 - W15/2 |
| 100 | 1.2.2.6 | **SW Integration** |  | 43.3d | 2020-02-25 | 2020-04-28 |  |  |  | 55d |  |  |  |  |  |
| 101 | 1.2.2.6.1 | SW Integration Test Specification. |  | 4d | 2020-02-25 | 2020-02-28 |  |  |  | 92.3d | 0d |  |  |  | W09/2 - W09/5 |
| 102 | 1.2.2.6.2 | SW Integration Test Cases Implementation. |  | 2d | 2020-03-02 | 2020-03-03 | 101 |  |  | 92.3d |  |  |  |  | W10/1 - W10/2 |
| 103 | 1.2.2.6.3 | SW Integration. |  | 4d | 2020-04-13 | 2020-04-20 | 38, 59, 79, 99 |  |  | 55d | 0d |  |  |  | W16/1 - W17/1 |
| 104 | 1.2.2.6.4 | SW Integration Test execution & Its Rerport Generation. |  | 2d | 2020-04-20 | 2020-04-22 | 103 |  |  | 55d | 0d |  |  |  | W17/1 - W17/3 |
| 105 | 1.2.2.6.5 | SW Version Management. |  | 3d | 2020-04-20 | 2020-04-23 | 103 |  |  | 57d | 0d |  |  |  | W17/1 - W17/4 |
| 106 | 1.2.2.6.6 | SW Release Notes. |  | 1d | 2020-04-23 | 2020-04-24 | 105 |  |  | 57d |  |  |  |  | W17/4 - W17/5 |
| 107 | 1.2.2.6.7 | HKMC SW Integration |  | 1d | 2020-04-22 | 2020-04-23 | 104 |  |  | 55d | 0d |  |  |  | W17/3 - W17/4 |
| 108 | 1.2.2.6.8 | HKMC Application SW Release | milestone | 0d | 2020-04-23 | 2020-04-23 | 107 |  |  | 55d | 0d |  |  |  | W17/4 - W17/4 |
| 109 | 1.2.2.6.9 | App SW Integration Testing on MCU |  | 2d | 2020-04-24 | 2020-04-28 | 112 |  |  | 55d | 0d |  |  |  | W17/5 - W18/2 |
| 110 | 1.2.2.6.10 | HKMC Application SW Release for Testing | milestone | 0d | 2020-04-28 | 2020-04-28 | 109 |  |  | 55d |  |  |  |  | W18/2 - W18/2 |

Notes:
- 85: not applicable for R0
- 86: not applicable for R0
- 87: not applicable for R0
- 94: not applicable for R0
- 95: not applicable for R0
- 96: not applicable for R0
- 97: not applicable for R0
- 98: not applicable for R0
- 99: not applicable for R0
- 107: (Buildable Application SW on GIT repo together with HKMC Basic SW
- 109: Need to Follow Basic SW Integration Release

| ID | WBS | Task | Type | Duration | Start | Finish | Predecessors | Remaining | Total slack | Free slack | Resources | Work | Actual work | CW |
| --- | --- | --- | --- | --- | --- | --- | --- | --- | --- | --- | --- | --- | --- | --- |
| 111 | 1.2.3 | **Basic SW** |  | 1d | 2020-04-23 | 2020-04-24 |  |  | 55d |  |  | 8h |  |  |
| 112 | 1.2.3.1 | SW Integration Review |  | 1d | 2020-04-23 | 2020-04-24 | 108 |  | 55d | 0d | Young-Jung Huh | 8h |  | W17/4 - W17/5 |
| 113 | 1.3 | HKMC R2 SDB | milestone, manual | 0d | 2020-04-06 | 2020-04-06 |  |  |  |  |  |  |  | W15/1 - W15/1 |
| 114 | 1.4 | **SW Release R2** |  | 70.3d | 2020-04-06 A | 2020-07-15 |  | 70.3d | 0d |  |  | 2045.6h | 80.8h |  |
| 115 | 1.4.1 | **Systems** |  | 38.8d | 2020-04-06 | 2020-06-01 |  |  | 0d |  |  | 156.8h |  |  |
| 116 | 1.4.1.1 | Creation of SDB |  | 16.8d | 2020-04-06 | 2020-06-01 | 113 |  | 0d |  | Soo-Jin Ahn; Philippe Lavole; Hyun-Jin Choi | 156.8h |  | W15/1 - W23/1 |
| 117 | 1.4.1.2 | SDB Release | milestone | 0d | 2020-06-01 | 2020-06-01 | 116 |  | 0d |  | Soo-Jin Ahn |  |  | W23/1 - W23/1 |
| 118 | 1.4.2 | **Application SW** |  | 70.3d | 2020-04-06 A | 2020-07-15 |  | 70.3d | 0d |  | Srikanth Mukku | 1888.8h | 80.8h |  |
| 119 | 1.4.2.1 | **SW Architecture** |  | 19d | 2020-06-01 | 2020-06-26 |  |  | 6d |  | Soo-Jin Ahn | 408h |  |  |
| 120 | 1.4.2.1.1 | SW Adaptors Strategy. |  | 2d | 2020-06-01 | 2020-06-03 | 117 |  | 22.5d | 10d | Soo-Jin Ahn | 16h |  | W23/1 - W23/3 |
| 121 | 1.4.2.1.2 | SW Architecture in EA Development |  | 4d | 2020-06-17 | 2020-06-23 | 120, 137, 158, 178, 135, 155, 175, 130, 195, 198 |  | 12.5d | 0d | Soo-Jin Ahn | 32h |  | W25/3 - W26/2 |
| 122 | 1.4.2.1.3 | SW EA Architecture Review |  | 3d | 2020-06-23 | 2020-06-26 | 121 |  | 12.5d | 0d | Soo-Jin Ahn; Choong-Yup Shin; Hoon Bae | 72h |  | W26/2 - W26/5 |
| 123 | 1.4.2.1.4 | SW EA Architecture Release | milestone | 0d | 2020-06-26 | 2020-06-26 | 122 |  | 12.5d |  | Soo-Jin Ahn |  |  | W26/5 - W26/5 |
| 124 | 1.4.2.1.5 | **SW Architecture ARXML 's Development** |  | 7d | 2020-06-05 | 2020-06-16 |  |  | 2d |  | Soo-Jin Ahn | 112h |  |  |
| 125 | 1.4.2.1.5.1 | Adaptors Design in Davinci Developer. |  | 4d | 2020-06-05 | 2020-06-11 | 117, 135, 155, 175, 195 |  | 2d | 0d | Soo-Jin Ahn | 32h |  | W23/5 - W24/4 |
| 126 | 1.4.2.1.5.2 | Adaptors ARXML Generation for simulink import. |  | 1d | 2020-06-11 | 2020-06-12 | 125 |  | 2d | 0d | Soo-Jin Ahn | 8h |  | W24/4 - W24/5 |
| 127 | 1.4.2.1.5.3 | Scheduler for ASP SW Integration |  | 1d | 2020-06-12 | 2020-06-15 | 126 |  | 2d | 0d | Soo-Jin Ahn | 8h |  | W24/5 - W25/1 |
| 128 | 1.4.2.1.5.4 | Scheduler for SW Adaptors. |  | 1d | 2020-06-15 | 2020-06-16 | 127 |  | 2d | 0d | Soo-Jin Ahn | 8h |  | W25/1 - W25/2 |
| 129 | 1.4.2.1.6 | ARXML's Review for Basic SW & Adaptors Development |  | 1d | 2020-06-16 | 2020-06-17 | 128 |  | 2d | 0d | Soo-Jin Ahn; Choong-Yup Shin; Hoon Bae | 24h |  | W25/2 - W25/3 |
| 130 | 1.4.2.1.7 | ARXML's Release | milestone | 0d | 2020-06-17 | 2020-06-17 | 129 |  | 2d | 0d | Soo-Jin Ahn |  |  | W25/3 - W25/3 |
| 131 | 1.4.2.2 | **Adaptor 1 : FCA-Car/Ped Adaptor Development** |  | 17.5d | 2020-06-01 A | 2020-06-25 |  | 17.5d | 0d |  | Hoon Bae | 298.4h | 26.4h |  |
| 132 | 1.4.2.2.1 | **Feature_SignalInterfaceMatrix** |  | 2d | 2020-06-01 | 2020-06-03 |  |  | 0d |  | Hoon Bae | 36h |  |  |
| 133 | 1.4.2.2.1.1 | Creation of SignalInterfaceMatrix |  | 12h | 2020-06-01 | 2020-06-03 | 117 |  | 0d |  | Hoon Bae | 12h |  | W23/1 - W23/3 |
| 134 | 1.4.2.2.1.2 | Review of SignalInterface Matrix |  | 4h | 2020-06-03 | 2020-06-03 | 133 |  | 0d |  | Hoon Bae; Soo-Jin Ahn | 8h |  | W23/3 - W23/3 |
| 135 | 1.4.2.2.1.3 | Release of FCA Car7Ped Adaptor SignalInterface Matrix | milestone | 0d | 2020-06-03 | 2020-06-03 | 134 |  | 0d |  | Hoon Bae |  |  | W23/3 - W23/3 |
| 136 | 1.4.2.2.2 | Adaptor Detailed Design( if it is a small gap FD has to do that, if it is a big gap FO has to do that). | milestone | 0d | 2020-06-05 | 2020-06-05 | 132, 175 |  | 0d |  | Hoon Bae |  |  | W23/5 - W23/5 |
| 137 | 1.4.2.2.3 | Adaptor Detailed Design Review | milestone | 0d | 2020-06-05 | 2020-06-05 | 136 |  | 0d |  | Hoon Bae; Soo-Jin Ahn |  |  | W23/5 - W23/5 |
| 138 | 1.4.2.2.4 | Release of FCA Car/Ped Adaptor Detailed Design | milestone | 0d | 2020-06-05 | 2020-06-05 | 137 |  | 0d |  | Hoon Bae |  |  | W23/5 - W23/5 |

Notes:
- 113: Starting MileStone
- 114: FLC Variant : / F1. FCA-Car/Ped/ F2. LKA-L / Assumption from Me : / Needed Adaptors on FLC SW: / A1 : FCA-CAr/Ped / A2 : LKA -L / A3 : Vehicle Input / A4 : Vehicle Output
- 116: This is a FO Task, but at present supported by SW Architect / This need to be done for all features
- 120: This is not yet reflected in the work flow diagram
- 121: SW Architecture for Adaptors
- 132: This is the signal interface matrix at / SWC level for supporting Archtecture
- 136: not applicable for R0
- 137: not applicable for R0
- 138: not applicable for R0

| ID | WBS | Task | Type | Duration | Start | Finish | Predecessors | Remaining | Total slack | Free slack | Resources | Work | Actual work | CW |
| --- | --- | --- | --- | --- | --- | --- | --- | --- | --- | --- | --- | --- | --- | --- |
| 139 | 1.4.2.2.5 | **Adaptor Simulink Development** |  | 11.5d | 2020-06-05 | 2020-06-23 |  |  | 0d |  | Hoon Bae | 140h |  |  |
| 140 | 1.4.2.2.5.1 | Simulink Design Development |  | 4d | 2020-06-05 | 2020-06-11 | 138 |  | 0d |  | Hoon Bae | 32h |  | W23/5 - W24/4 |
| 141 | 1.4.2.2.5.2 | Simulink Import of ARXML & linking to Development Models |  | 4h | 2020-06-19 | 2020-06-22 | 130, 180 |  | 0d |  | Hoon Bae | 4h |  | W25/5 - W26/1 |
| 142 | 1.4.2.2.5.3 | Simulink Design Release & Review |  | 4h | 2020-06-22 | 2020-06-22 | 141 |  | 0d |  | Hoon Bae; Soo-Jin Ahn | 8h |  | W26/1 - W26/1 |
| 143 | 1.4.2.2.5.4 | Adaptor Code Generation from Simulink. |  | 4h | 2020-06-22 | 2020-06-23 | 142 |  | 0d |  | Hoon Bae | 4h |  | W26/1 - W26/2 |
| 144 | 1.4.2.2.5.5 | Release of FCA-Car/Ped Adaptor Simulink Design | milestone | 0d | 2020-06-23 | 2020-06-23 | 143 |  | 0d |  | Hoon Bae |  |  | W26/2 - W26/2 |
| 145 | 1.4.2.2.6 | **SW Unit Test Specification & Test Cases Development** |  | 0d | 2020-06-23 | 2020-06-23 |  |  | 0d |  | Hoon Bae |  |  |  |
| 146 | 1.4.2.2.6.1 | Adaptor Unit Test Specification. | milestone | 0d | 2020-06-23 | 2020-06-23 | 144 |  | 0d |  | Hoon Bae |  |  | W26/2 - W26/2 |
| 147 | 1.4.2.2.6.2 | Adaptor Unit Test Cases Implementation. | milestone | 0d | 2020-06-23 | 2020-06-23 | 146 |  | 0d |  | Hoon Bae |  |  | W26/2 - W26/2 |
| 148 | 1.4.2.2.7 | Adaptor Unit Test Execution and its report generation. | milestone | 0d | 2020-06-23 | 2020-06-23 | 147 |  | 0d |  | Hoon Bae |  |  | W26/2 - W26/2 |
| 149 | 1.4.2.2.8 | SW Source Code & Unit Test Report Review |  | 2d | 2020-06-23 | 2020-06-25 | 148 |  | 0d |  | Hoon Bae; Soo-Jin Ahn | 32h |  | W26/2 - W26/4 |
| 150 | 1.4.2.2.9 | Release of FCA-Car/Ped SW Source Code & SW Unit Test Report | milestone | 0d | 2020-06-25 | 2020-06-25 | 149 |  | 0d |  | Hoon Bae |  |  | W26/4 - W26/4 |
| 151 | 1.4.2.3 | **Adaptor 2 : LKA-L Adaptor Development** |  | 16.5d | 2020-06-01 A | 2020-06-24 |  | 16.5d | 1d |  | Choong-Yup Shin | 274.4h | 18.4h |  |
| 152 | 1.4.2.3.1 | **Signal Matrix preparation for Adaptor for architecture support.** |  | 2d | 2020-06-01 | 2020-06-03 |  |  | 1d |  | Choong-Yup Shin | 36h |  |  |
| 153 | 1.4.2.3.1.1 | Creation of SignalInterfaceMatrix |  | 12h | 2020-06-01 | 2020-06-03 | 117 |  | 1d | 0d | Choong-Yup Shin | 12h |  | W23/1 - W23/3 |
| 154 | 1.4.2.3.1.2 | Review & Release of SignalInterface Matrix |  | 4h | 2020-06-03 | 2020-06-03 | 153 |  | 1d | 0d | Soo-Jin Ahn; Choong-Yup Shin | 8h |  | W23/3 - W23/3 |
| 155 | 1.4.2.3.1.3 | Release of LKA-L Adaptor SignalInterface Matrix | milestone | 0d | 2020-06-03 | 2020-06-03 | 154 |  | 1d | 0d | Choong-Yup Shin |  |  | W23/3 - W23/3 |
| 156 | 1.4.2.3.2 | Adaptor Detailed Design( if it is a small gap FD has to do that, if it is a big gap FO has to do that). | milestone | 0d | 2020-06-05 | 2020-06-05 | 155, 195 |  | 1d | 0d | Choong-Yup Shin |  |  | W23/5 - W23/5 |
| 157 | 1.4.2.3.3 | Adaptor Detailed Design Review | milestone | 0d | 2020-06-05 | 2020-06-05 | 156 |  | 1d | 0d | Soo-Jin Ahn; Choong-Yup Shin |  |  | W23/5 - W23/5 |
| 158 | 1.4.2.3.4 | Release of LKA-L Adaptor Detailed Design | milestone | 0d | 2020-06-05 | 2020-06-05 | 157 |  | 1d | 0d | Choong-Yup Shin |  |  | W23/5 - W23/5 |
| 159 | 1.4.2.3.5 | **Adaptor Simulink Development** |  | 11.5d | 2020-06-05 | 2020-06-23 |  |  | 1d |  | Choong-Yup Shin | 140h |  |  |
| 160 | 1.4.2.3.5.1 | Simulink Design Development |  | 4d | 2020-06-05 | 2020-06-11 | 158 |  | 1d | 0d | Choong-Yup Shin | 32h |  | W23/5 - W24/4 |
| 161 | 1.4.2.3.5.2 | Simulink Import of ARXML & linking to Development Models |  | 4h | 2020-06-19 | 2020-06-22 | 130, 200 |  | 1d | 0d | Choong-Yup Shin | 4h |  | W25/5 - W26/1 |
| 162 | 1.4.2.3.5.3 | Simulink Design Release & Review |  | 4h | 2020-06-22 | 2020-06-22 | 161 |  | 1d | 0d | Choong-Yup Shin; Soo-Jin Ahn | 8h |  | W26/1 - W26/1 |
| 163 | 1.4.2.3.5.4 | Adaptor Code Generation from Simulink. |  | 4h | 2020-06-22 | 2020-06-23 | 162 |  | 1d | 0d | Choong-Yup Shin | 4h |  | W26/1 - W26/2 |
| 164 | 1.4.2.3.5.5 | Release of LKA-L Adaptor Simulink Design | milestone | 0h | 2020-06-23 | 2020-06-23 | 163 |  | 1d | 0d | Choong-Yup Shin |  |  | W26/2 - W26/2 |

Notes:
- 145: not applicable for R0
- 146: not applicable for R0
- 147: not applicable for R0
- 148: not applicable for R0
- 156: not applicable for R0
- 157: not applicable for R0
- 158: not applicable for R0

| ID | WBS | Task | Type | Duration | Start | Finish | Predecessors | Total slack | Free slack | Resources | Work | CW |
| --- | --- | --- | --- | --- | --- | --- | --- | --- | --- | --- | --- | --- |
| 165 | 1.4.2.3.6 | **SW Unit Test Specification & Test Cases Development** |  | 0d | 2020-06-23 | 2020-06-23 |  | 1d |  | Choong-Yup Shin |  |  |
| 166 | 1.4.2.3.6.1 | Adaptor Unit Test Specification. | milestone | 0d | 2020-06-23 | 2020-06-23 | 164 | 1d | 0d | Choong-Yup Shin |  | W26/2 - W26/2 |
| 167 | 1.4.2.3.6.2 | Adaptor Unit Test Cases Implementation. | milestone | 0d | 2020-06-23 | 2020-06-23 | 166 | 1d | 0d | Choong-Yup Shin |  | W26/2 - W26/2 |
| 168 | 1.4.2.3.7 | Adaptor Unit Test Execution and its report generation. | milestone | 0d | 2020-06-23 | 2020-06-23 | 167 | 1d | 0d | Choong-Yup Shin |  | W26/2 - W26/2 |
| 169 | 1.4.2.3.8 | SW Source Code & Unit Test Report Review |  | 1d | 2020-06-23 | 2020-06-24 | 168 | 1d | 0d | Choong-Yup Shin; Soo-Jin Ahn | 16h | W26/2 - W26/3 |
| 170 | 1.4.2.3.9 | Release of LKA_L SW Source Code & Unit Test Report | milestone | 0d | 2020-06-24 | 2020-06-24 | 169 | 1d | 0d | Choong-Yup Shin |  | W26/3 - W26/3 |
| 171 | 1.4.2.4 | **Vehicle Input Adaptor** |  | 19.5d | 2020-06-03 | 2020-07-01 |  | 0d |  | Hoon Bae | 368h |  |
| 172 | 1.4.2.4.1 | **Signal Matrix preparation for Adaptor for architecture support.** |  | 2d | 2020-06-03 | 2020-06-05 |  | 0d |  |  | 20h |  |
| 173 | 1.4.2.4.1.1 | Creation of SignalInterfaceMatrix |  | 12h | 2020-06-03 | 2020-06-05 | 117, 135 | 0d |  | Hoon Bae | 12h | W23/3 - W23/5 |
| 174 | 1.4.2.4.1.2 | Review & Release of SignalInterface Matrix |  | 4h | 2020-06-05 | 2020-06-05 | 173 | 0d |  | Soo-Jin Ahn; Hoon Bae | 8h | W23/5 - W23/5 |
| 175 | 1.4.2.4.1.3 | Release of Veh_Inp Adaptor SignalInterface Matrix | milestone | 0d | 2020-06-05 | 2020-06-05 | 174 | 0d |  | Hoon Bae |  | W23/5 - W23/5 |
| 176 | 1.4.2.4.2 | Adaptor Detailed Design( if it is a small gap FD has to do that, if it is a big gap FO has to do that). | milestone | 0d | 2020-06-11 | 2020-06-11 | 140, 172 | 0d |  | Hoon Bae |  | W24/4 - W24/4 |
| 177 | 1.4.2.4.3 | Adaptor Detailed Design Review | milestone | 0d | 2020-06-11 | 2020-06-11 | 176 | 0d |  | Soo-Jin Ahn; Hoon Bae |  | W24/4 - W24/4 |
| 178 | 1.4.2.4.4 | Release of Veh_Inp Adaptor Detailed Design | milestone | 0d | 2020-06-11 | 2020-06-11 | 177 | 0d |  | Hoon Bae |  | W24/4 - W24/4 |
| 179 | 1.4.2.4.5 | **Adaptor Simulink Development** |  | 12.5d | 2020-06-11 | 2020-06-30 |  | 0d |  | Hoon Bae | 176h |  |
| 180 | 1.4.2.4.5.1 | Simulink Design Development |  | 6d | 2020-06-11 | 2020-06-19 | 178 | 0d |  | Hoon Bae | 48h | W24/4 - W25/5 |
| 181 | 1.4.2.4.5.2 | Simulink Import of ARXML & linking to Development Models |  | 4h | 2020-06-25 | 2020-06-25 | 130, 150 | 0d |  | Hoon Bae | 4h | W26/4 - W26/4 |
| 182 | 1.4.2.4.5.3 | Simulink Design Release & Review |  | 4h | 2020-06-25 | 2020-06-26 | 181 | 0d |  | Hoon Bae; Soo-Jin Ahn | 8h | W26/4 - W26/5 |
| 183 | 1.4.2.4.5.4 | Adaptor Code Generation from Simulink. |  | 2d | 2020-06-26 | 2020-06-30 | 182 | 0d |  | Hoon Bae | 16h | W26/5 - W27/2 |
| 184 | 1.4.2.4.5.5 | Release of Veh_Inp Adaptor Simulink Design | milestone | 0d | 2020-06-30 | 2020-06-30 | 183 | 0d |  | Hoon Bae |  | W27/2 - W27/2 |
| 185 | 1.4.2.4.6 | **SW Unit Test Specification & Test Cases Development** |  | 0d | 2020-06-30 | 2020-06-30 |  | 0d |  | Hoon Bae |  |  |
| 186 | 1.4.2.4.6.1 | Adaptor Unit Test Specification. | milestone | 0d | 2020-06-30 | 2020-06-30 | 184 | 0d |  | Hoon Bae |  | W27/2 - W27/2 |
| 187 | 1.4.2.4.6.2 | Adaptor Unit Test Cases Implementation. | milestone | 0d | 2020-06-30 | 2020-06-30 | 186 | 0d |  | Hoon Bae |  | W27/2 - W27/2 |
| 188 | 1.4.2.4.7 | Adaptor Unit Test Execution and its report generation. | milestone | 0d | 2020-06-30 | 2020-06-30 | 187 | 0d |  | Hoon Bae |  | W27/2 - W27/2 |
| 189 | 1.4.2.4.8 | SW Source Code & Unit Test Report Review |  | 1d | 2020-06-30 | 2020-07-01 | 188 | 0d |  | Soo-Jin Ahn; Hoon Bae | 16h | W27/2 - W27/3 |
| 190 | 1.4.2.4.9 | Release of Vhe_In Adaptor SW Source Code & Unit Test Report | milestone | 0d | 2020-07-01 | 2020-07-01 | 189 | 0d |  | Hoon Bae |  | W27/3 - W27/3 |

Notes:
- 165: not applicable for R0
- 166: not applicable for R0
- 167: not applicable for R0
- 168: not applicable for R0
- 176: not applicable for R0
- 177: not applicable for R0
- 178: not applicable for R0
- 185: not applicable for R0
- 186: not applicable for R0
- 187: not applicable for R0
- 188: not applicable for R0

| ID | WBS | Task | Type | Duration | Start | Finish | Predecessors | Remaining | Total slack | Free slack | Resources | Work | Actual work | CW |
| --- | --- | --- | --- | --- | --- | --- | --- | --- | --- | --- | --- | --- | --- | --- |
| 191 | 1.4.2.5 | **Vehicle Output Adaptor** |  | 18.5d | 2020-06-03 A | 2020-06-30 |  | 18.5d | 11d |  | Choong-Yup Shin | 300h | 36h |  |
| 192 | 1.4.2.5.1 | **Signal Matrix preparation for Adaptor for architecture support.** |  | 2d | 2020-06-03 | 2020-06-05 |  |  | 1d |  |  | 20h |  |  |
| 193 | 1.4.2.5.1.1 | Creation of SignalInterfaceMatrix |  | 12h | 2020-06-03 | 2020-06-05 | 117, 155 |  | 1d | 0d | Choong-Yup Shin | 12h |  | W23/3 - W23/5 |
| 194 | 1.4.2.5.1.2 | Review & Release of SignalInterface Matrix |  | 4h | 2020-06-05 | 2020-06-05 | 193 |  | 1d | 0d | Soo-Jin Ahn; Choong-Yup Shin | 8h |  | W23/5 - W23/5 |
| 195 | 1.4.2.5.1.3 | Release of Veh_Out Adaptor SignalInterface Matrix | milestone | 0d | 2020-06-05 | 2020-06-05 | 194 |  | 1d | 0d | Choong-Yup Shin |  |  | W23/5 - W23/5 |
| 196 | 1.4.2.5.2 | Adaptor Detailed Design( if it is a small gap FD has to do that, if it is a big gap FO has to do that). | milestone | 0d | 2020-06-11 | 2020-06-11 | 160, 192 |  | 1d | 0d | Choong-Yup Shin |  |  | W24/4 - W24/4 |
| 197 | 1.4.2.5.3 | Adaptor Detailed Design Review | milestone | 0d | 2020-06-11 | 2020-06-11 | 196 |  | 23.5d |  | Soo-Jin Ahn; Choong-Yup Shin |  |  | W24/4 - W24/4 |
| 198 | 1.4.2.5.4 | Release of Veh_Out Adaptor Detailed Design | milestone | 0d | 2020-06-11 | 2020-06-11 | 196 |  | 1d | 0d | Choong-Yup Shin |  |  | W24/4 - W24/4 |
| 199 | 1.4.2.5.5 | **Adaptor Simulink Development** |  | 11.5d | 2020-06-11 | 2020-06-29 |  |  | 1d |  | Choong-Yup Shin | 164h |  |  |
| 200 | 1.4.2.5.5.1 | Simulink Design Development |  | 6d | 2020-06-11 | 2020-06-19 | 198 |  | 1d | 0d | Choong-Yup Shin | 48h |  | W24/4 - W25/5 |
| 201 | 1.4.2.5.5.2 | Simulink Import of ARXML & linking to Development Models |  | 4h | 2020-06-24 | 2020-06-24 | 130, 170 |  | 1d | 0d | Choong-Yup Shin | 4h |  | W26/3 - W26/3 |
| 202 | 1.4.2.5.5.3 | Simulink Design Release & Review |  | 4h | 2020-06-24 | 2020-06-25 | 201 |  | 1d | 0d | Choong-Yup Shin | 4h |  | W26/3 - W26/4 |
| 203 | 1.4.2.5.5.4 | Adaptor Code Generation from Simulink. |  | 2d | 2020-06-25 | 2020-06-29 | 202 |  | 1d | 0d | Choong-Yup Shin | 16h |  | W26/4 - W27/1 |
| 204 | 1.4.2.5.5.5 | Release of Veh_Out Adaptor Simulink Design | milestone | 0d | 2020-06-29 | 2020-06-29 | 203 |  | 1d | 0d | Choong-Yup Shin |  |  | W27/1 - W27/1 |
| 205 | 1.4.2.5.6 | **SW Unit Test Specification & Test Cases Development** |  | 0d | 2020-06-29 | 2020-06-29 |  |  | 1d |  | Choong-Yup Shin |  |  |  |
| 206 | 1.4.2.5.6.1 | Adaptor Unit Test Specification. | milestone | 0d | 2020-06-29 | 2020-06-29 | 204 |  | 1d | 0d | Choong-Yup Shin |  |  | W27/1 - W27/1 |
| 207 | 1.4.2.5.6.2 | Adaptor Unit Test Cases Implementation. | milestone | 0d | 2020-06-29 | 2020-06-29 | 206 |  | 1d | 0d | Choong-Yup Shin |  |  | W27/1 - W27/1 |
| 208 | 1.4.2.5.7 | Adaptor Unit Test Execution and its report generation. | milestone | 0d | 2020-06-29 | 2020-06-29 | 207 |  | 1d | 0d | Choong-Yup Shin |  |  | W27/1 - W27/1 |
| 209 | 1.4.2.5.8 | SW Source Code & Unit Test Report Review |  | 1d | 2020-06-29 | 2020-06-30 | 208 |  | 1d | 0d | Choong-Yup Shin; Soo-Jin Ahn | 16h |  | W27/1 - W27/2 |
| 210 | 1.4.2.5.9 | Release of Veh_Out Adaptor SW Source Code & Unit Test Report | milestone | 0d | 2020-06-30 | 2020-06-30 | 209 |  | 1d |  | Choong-Yup Shin |  |  | W27/2 - W27/2 |
| 211 | 1.4.2.6 | **SW Integration** |  | 70.3d | 2020-04-06 | 2020-07-15 |  |  | 0d |  |  |  |  |  |
| 212 | 1.4.2.6.1 | SW Integration Test Specification. |  | 4d | 2020-04-06 | 2020-04-09 | 113 |  | 64.3d | 0d |  |  |  | W15/1 - W15/4 |
| 213 | 1.4.2.6.2 | SW Integration Test Cases Implementation. |  | 2d | 2020-04-10 | 2020-04-13 | 212 |  | 64.3d |  |  |  |  | W15/5 - W16/1 |
| 214 | 1.4.2.6.3 | SW Integration. |  | 4d | 2020-07-01 | 2020-07-07 | 149, 170, 190, 210 |  | 0d |  |  |  |  | W27/3 - W28/2 |
| 215 | 1.4.2.6.4 | SW Integration Test execution & Its Rerport Generation. |  | 2d | 2020-07-07 | 2020-07-09 | 214 |  | 0d |  |  |  |  | W28/2 - W28/4 |
| 216 | 1.4.2.6.5 | SW Version Management. |  | 3d | 2020-07-07 | 2020-07-10 | 214 |  | 2d | 0d |  |  |  | W28/2 - W28/5 |
| 217 | 1.4.2.6.6 | SW Release Notes. |  | 1d | 2020-07-10 | 2020-07-13 | 216 |  | 2d |  |  |  |  | W28/5 - W29/1 |
| 218 | 1.4.2.6.7 | HKMC SW Integration |  | 1d | 2020-07-09 | 2020-07-10 | 215 |  | 0d |  |  |  |  | W28/4 - W28/5 |
| 219 | 1.4.2.6.8 | HKMC Application SW Release | milestone | 0d | 2020-07-10 | 2020-07-10 | 218 |  | 0d |  |  |  |  | W28/5 - W28/5 |
| 220 | 1.4.2.6.9 | App SW Integration Testing on MCU |  | 2d | 2020-07-13 | 2020-07-15 | 223 |  | 0d |  |  |  |  | W29/1 - W29/3 |
| 221 | 1.4.2.6.10 | HKMC Application SW Release for Testing | milestone | 0d | 2020-07-15 | 2020-07-15 | 220 |  | 0d |  |  |  |  | W29/3 - W29/3 |

Notes:
- 196: not applicable for R0
- 197: not applicable for R0
- 198: not applicable for R0
- 205: not applicable for R0
- 206: not applicable for R0
- 207: not applicable for R0
- 208: not applicable for R0
- 218: (Buildable Application SW on GIT repo together with HKMC Basic SW
- 220: Need to Follow Basic SW Integration Release

| ID | WBS | Task | Duration | Start | Finish | Predecessors | Total slack | CW |
| --- | --- | --- | --- | --- | --- | --- | --- | --- |
| 222 | 1.4.3 | **Basic SW** | 1d | 2020-07-10 | 2020-07-13 |  | 0d |  |
| 223 | 1.4.3.1 | SW Integration Review | 1d | 2020-07-10 | 2020-07-13 | 219 | 0d | W28/5 - W29/1 |
